| id | section_id | name | trade | kind | duration_days | crew_size | derived_from | phase_id | component_id | scheduled_start | scheduled_end | earliest_start | latest_start | float_days | status | binding_successors_of_this | depends_on | binding_predecessors | edit_notes |
| --- | --- | --- | --- | --- | --- | --- | --- | --- | --- | --- | --- | --- | --- | --- | --- | --- | --- | --- | --- |
| proc_foundation_package | procurement | Foundation | general | procurement | 5 | 0 | procurement | procurement | procurement_items | 2027-02-24 | 2027-03-02 | 2027-02-24 | 2027-02-24 | 0 | not_started | foundation FS 3 2027-03-08 2027-03-10 |  |  |  |
| proc_framing_package | procurement | Framing Package | general | procurement | 7 | 0 | procurement | procurement | procurement_items | 2027-03-04 | 2027-03-12 | 2027-03-04 | 2027-03-04 | 0 | not_started | framing FS 3 2027-03-18 2027-03-29 |  |  |  |
| proc_tile | procurement | Tile & setting materials | general | procurement | 7 | 0 | procurement | procurement | procurement_items | 2027-02-18 | 2027-02-26 | 2027-02-18 | 2027-04-02 | 31 | not_started |  |  |  |  |
| proc_concrete_patio | procurement | Concrete + Patio Work | general | procurement | 1 | 0 | procurement | procurement | procurement_items | 2027-02-26 | 2027-02-26 | 2027-02-26 | 2027-04-12 | 31 | not_started |  |  |  |  |
| permit_building | permits | Building permit | general | permit | 10 | 0 | permits | permits | permit_items | 2027-02-15 | 2027-02-26 | 2027-02-15 | 2027-02-15 | 0 | not_started | site_and_structure_demo FS 0 2027-03-01 2027-03-02 |  |  |  |
| site_and_structure_demo | demolition | Demolition (site + structure at addition footprint) | demo | work | 2 | 2 | demolition | demolition | main_demolition | 2027-03-01 | 2027-03-02 | 2027-03-01 | 2027-03-01 | 0 | not_started | site_prep FS 0 2027-03-03 2027-03-03 | permit_building FS | permit_building FS 0 |  |
| site_prep | site_foundation | Site prep (protection, staging, access) | general | work | 1 | 2 | site_foundation | site_foundation | groundwork | 2027-03-03 | 2027-03-03 | 2027-03-03 | 2027-03-03 | 0 | not_started | excavation FS 0 2027-03-04 2027-03-08 | site_and_structure_demo FS | site_and_structure_demo FS 0 |  |
| excavation | site_foundation | Excavation (footings, slab, access) | excavation | work | 3 | 2 | site_foundation | site_foundation | groundwork | 2027-03-04 | 2027-03-08 | 2027-03-04 | 2027-03-04 | 0 | not_started | foundation FS -1 2027-03-08 2027-03-10 | site_prep FS | site_prep FS 0 | 2026-09-09T20:23:01.427Z Test edit made to extend excavation by one day job duration 2wd → 3wd · → foundation FS lag 0d → -1d |
| foundation | site_foundation | Foundation (form, inspect, pour) | concrete | work | 3 | 4 | site_foundation | site_foundation | groundwork | 2027-03-08 | 2027-03-10 | 2027-03-08 | 2027-03-08 | 0 | not_started | site_foundation.end FS 0 2027-03-11 2027-03-11 | excavation FS -1, proc_foundation_package FS 3 | excavation FS -1, proc_foundation_package FS 3 |  |
| site_foundation.end | site_foundation | Site Prep & Foundation — complete | general | milestone | 0 | 0 | site_foundation | site_foundation |  | 2027-03-11 | 2027-03-11 | 2027-03-11 | 2027-03-11 | 0 | not_started | framing_shell.start FS 5 2027-03-18 2027-03-18 | foundation FS | foundation FS 0 |  |
| framing_shell.start | framing_shell | Framing & Shell — start | general | milestone | 0 | 0 | framing_shell | framing_shell |  | 2027-03-18 | 2027-03-18 | 2027-03-18 | 2027-03-18 | 0 | not_started | framing FS 0 2027-03-18 2027-03-29 | site_foundation.end FS 5 | site_foundation.end FS 5 |  |
| framing | framing_shell | Framing (floor, walls, roof structure, sheathing) | framing | work | 8 | 3 | framing_shell | framing_shell | structural_framing | 2027-03-18 | 2027-03-29 | 2027-03-18 | 2027-03-18 | 0 | not_started | roofing FS 0 2027-03-30 2027-03-31, siding FS 0 2027-03-30 2027-03-31 | framing_shell.start FS, proc_framing_package FS 3 | framing_shell.start FS 0, proc_framing_package FS 3 |  |
| roofing | exterior_finishes | Roofing (underlayment, shingles, flashing, tie-in blend) | roofing | work | 2 | 3 | exterior_finishes | exterior_finishes | cladding_roof | 2027-03-30 | 2027-03-31 | 2027-03-30 | 2027-03-30 | 0 | not_started | bundled_rough_inspections FS 0 2027-04-01 2027-04-01, exterior_finishes.end FS 0 2027-04-01 2027-04-01 | framing FS | framing FS 0 |  |
| siding | exterior_finishes | Siding (WRB, siding, tie-in blend) | siding | work | 2 | 2 | exterior_finishes | exterior_finishes | cladding_roof | 2027-03-30 | 2027-03-31 | 2027-03-30 | 2027-04-06 | 5 | not_started | exterior_finishes.end FS 0 2027-04-01 2027-04-01, extra.1 FS 0 2027-04-01 2027-04-05 | framing FS | framing FS 0 |  |
| extra.1 | exterior_finishes | Screen enclosure install (spline track, screen, screen door) | carpentry (in-house) | work | 3 | 2 | exterior_finishes flagged: review before trusting | exterior_finishes |  | 2027-04-01 | 2027-04-05 | 2027-04-01 | 2027-04-08 | 5 | not_started |  | siding FS | siding FS 0 |  |
| exterior_finishes.end | exterior_finishes | Exterior Finishes — complete | general | milestone | 0 | 0 | exterior_finishes | exterior_finishes |  | 2027-04-01 | 2027-04-01 | 2027-04-01 | 2027-04-13 | 8 | not_started |  | roofing FS, siding FS | roofing FS 0, siding FS 0 |  |
| bundled_rough_inspections | rough_inspections | Rough inspections (MEPs then framing, bundled) | inspector | inspection | 1 | 1 | rough_inspections | rough_inspections | bundled_inspections | 2027-04-01 | 2027-04-01 | 2027-04-01 | 2027-04-01 | 0 | not_started | extra.2 FS 0 2027-04-02 2027-04-07, rough_inspections.end FS 0 2027-04-02 2027-04-02 | roofing FS | roofing FS 0 |  |
| rough_inspections.end | rough_inspections | Rough Inspections — complete | general | milestone | 0 | 0 | rough_inspections | rough_inspections |  | 2027-04-02 | 2027-04-02 | 2027-04-02 | 2027-04-02 | 0 | not_started | finish_carpentry FS 0 2027-04-02 2027-04-05 | bundled_rough_inspections FS | bundled_rough_inspections FS 0 |  |
| finish_carpentry | interior_finishes | Finish Carpentry | trim_carpentry | work | 2 | 2 | interior_finishes | interior_finishes | final_trades_paint_2 | 2027-04-02 | 2027-04-05 | 2027-04-02 | 2027-04-02 | 0 | not_started | closeout.start FS 2 2027-04-08 2027-04-08 | rough_inspections.end FS | rough_inspections.end FS 0 |  |
| extra.2 | interior_finishes | Fireplace veneer, hearth & mantel | in-house masonry/carpentry | work | 4 | 2 | interior_finishes flagged: review before trusting | interior_finishes |  | 2027-04-02 | 2027-04-07 | 2027-04-02 | 2027-04-07 | 3 | not_started |  | bundled_rough_inspections FS | bundled_rough_inspections FS 0 |  |
| closeout.start | closeout | Closeout — start | general | milestone | 0 | 0 | closeout | closeout |  | 2027-04-08 | 2027-04-08 | 2027-04-08 | 2027-04-08 | 0 | not_started | customer_walkthrough FS 0 2027-04-08 2027-04-08 | finish_carpentry FS 2 | finish_carpentry FS 2 |  |
| customer_walkthrough | closeout | Customer walkthrough & punch list | pm | work | 1 | 1 | closeout | closeout | walkthrough_final_inspection | 2027-04-08 | 2027-04-08 | 2027-04-08 | 2027-04-08 | 0 | not_started | final_inspections FS 0 2027-04-09 2027-04-09 | closeout.start FS | closeout.start FS 0 |  |
| final_inspections | closeout | Final inspections (building + E/P/M, bundled) | inspector | inspection | 1 | 1 | closeout | closeout | walkthrough_final_inspection | 2027-04-09 | 2027-04-09 | 2027-04-09 | 2027-04-09 | 0 | not_started | job_complete FS 1 2027-04-13 2027-04-13 | customer_walkthrough FS | customer_walkthrough FS 0 |  |
| job_complete | closeout | Job complete (owner walkthrough with customer) | general | milestone | 0 | 0 | closeout | closeout | walkthrough_final_inspection | 2027-04-13 | 2027-04-13 | 2027-04-13 | 2027-04-13 | 0 | not_started |  | final_inspections FS 1, finish_carpentry FS, exterior_finishes.end FS, framing FS | final_inspections FS 1 |  |
